# FennecBotPlan

Schedule from MS Project, 2021-04-28 to 2021-07-21, A marks actual dates.

## Calendars

- Standard: Mon-Sun 08:00-12:00, 13:00-17:00. Exceptions (off unless hours are given): 2021-04-28 to 2021-07-21 08:00-12:00, 13:00-17:00.

## Resources

| Resource |
| --- |
| Hien Anh Nguyen Manh |
| Son Khue Nguyen |
| Umut Uzunoglu |
| Lukas Evers |

## Schedule

| ID | WBS | Task | Duration | Start | Finish | Predecessors | Complete | Remaining | Total slack | Constraint | Resources | Work | Actual work |
| --- | --- | --- | --- | --- | --- | --- | --- | --- | --- | --- | --- | --- | --- |
| 1 | 1 | **Fennec Bot** | 85d | 2021-04-28 A | 2021-07-21 |  | 97% | 2.54d | 0d |  |  | 1066h | 1066h |
| 2 | 1.1 | Lastenheft liegt vor | 1d | 2021-04-28 A | 2021-04-28 A |  | 100% |  |  | must start on 2021-04-28 |  |  |  |
| 3 | 1.2 | **Konzeptphase** | 21d | 2021-04-29 A | 2021-05-19 A | 2 | 100% |  |  |  |  | 96h | 96h |
| 4 | 1.2.1 | **Pflichtenheft** | 21d | 2021-04-29 A | 2021-05-19 A |  | 100% |  |  |  |  | 96h | 96h |
| 5 | 1.2.1.1 | Use Cases definieren | 1.5d | 2021-04-29 A | 2021-04-30 A |  | 100% |  |  | finish no earlier than 2021-05-12 | Son Khue Nguyen | 12h | 12h |
| 6 | 1.2.1.2 | Workflow erstellen | 2d | 2021-05-13 A | 2021-05-14 A |  | 100% |  |  |  | Hien Anh Nguyen Manh | 16h | 16h |
| 7 | 1.2.1.3 | Funktionalitäten | 8d | 2021-05-12 A | 2021-05-19 A |  | 100% |  |  | finish no earlier than 2021-05-19 | Lukas Evers [50%]; Son Khue Nguyen [50%]; Umut Uzunoglu | 68h | 68h |
| 8 | 1.3 | **Sprint 1** | 21d | 2021-05-20 A | 2021-06-09 A | 3 | 100% |  |  |  |  | 332h | 332h |
| 9 | 1.3.1 | **Jetson Nano** | 12d | 2021-05-20 A | 2021-05-31 A | 3 | 100% |  |  |  |  | 176h | 176h |
| 10 | 1.3.1.1 | Linux Einarbeitung | 2d | 2021-05-20 A | 2021-05-21 A |  | 100% |  |  |  | Hien Anh Nguyen Manh; Son Khue Nguyen; Umut Uzunoglu | 44h | 44h |
| 11 | 1.3.1.2 | Externen Controller einbinden | 10d | 2021-05-22 A | 2021-05-31 A | 10 | 100% |  |  |  | Lukas Evers [25%] | 20h | 20h |
| 12 | 1.3.1.3 | Intel Real Sense integrieren | 4d | 2021-05-22 A | 2021-05-25 A | 10 | 100% |  |  |  | Umut Uzunoglu [50%] | 16h | 16h |
| 13 | 1.3.1.4 | LiDAR Einbindung | 8d | 2021-05-22 A | 2021-05-29 A | 10 | 100% |  |  |  | Lukas Evers [25%] | 16h | 16h |
| 14 | 1.3.1.5 | ROS Melodic Einarbeitung | 4d | 2021-05-22 A | 2021-05-25 A | 10 | 100% |  |  |  | Hien Anh Nguyen Manh [50%]; Lukas Evers [50%]; Son Khue Nguyen [50%]; Umut Uzunoglu [50%] | 64h | 64h |
| 15 | 1.3.1.6 | ROS Enviroment einbinden | 4d | 2021-05-26 A | 2021-05-29 A | 14 | 100% |  |  |  | Umut Uzunoglu [50%] | 16h | 16h |
| 16 | 1.3.2 | **3D-Modell** | 11.08d | 2021-05-20 A | 2021-05-31 A | 3 | 100% |  |  |  |  | 64h | 64h |
| 17 | 1.3.2.1 | Abmessung vom Racer Bot | 2d | 2021-05-20 A | 2021-05-21 A |  | 100% |  |  |  | Lukas Evers [25%] | 4h | 4h |
| 18 | 1.3.2.2 | Erstes 3D Modell erstellen und (drucken) | 9.08d | 2021-05-22 A | 2021-05-31 A | 17 | 100% |  |  | finish no earlier than 2021-06-09 | Hien Anh Nguyen Manh [50%]; Son Khue Nguyen [50%] | 60h | 60h |
| 19 | 1.3.3 | **Intelligenz** | 14d | 2021-05-27 A | 2021-06-09 A |  | 100% |  |  |  |  | 56h | 56h |
| 20 | 1.3.3.1 | Autonome Navigation & Umbgebungserkundung | 14d | 2021-05-27 A | 2021-06-09 A |  | 100% |  |  | start no earlier than 2021-05-27 | Lukas Evers [50%] | 56h | 56h |
| 21 | 1.3.4 | **Jet Racer** | 9d | 2021-06-01 A | 2021-06-09 A |  | 100% |  |  |  |  | 36h | 36h |
| 22 | 1.3.4.1 | Fahren mit Controller (NVIDIA) | 9d | 2021-06-01 A | 2021-06-09 A | 11 | 100% |  |  |  | Lukas Evers [50%] | 36h | 36h |
| 23 | 1.4 | **Sprint 2** | 21d | 2021-06-10 A | 2021-06-30 A | 8 | 100% |  |  |  |  | 374h | 374h |
| 24 | 1.4.1 | **Intelligenz** | 21d | 2021-06-10 A | 2021-06-30 A |  | 100% |  |  |  |  | 236h | 236h |
| 25 | 1.4.1.1 | Linienerkennung | 5d | 2021-06-21 A | 2021-06-25 A |  | 100% |  |  | start no earlier than 2021-06-21 | Lukas Evers [30%] | 12h | 12h |
| 26 | 1.4.1.2 | Ballerkennung | 11d | 2021-06-10 A | 2021-06-20 A |  | 100% |  |  |  | Umut Uzunoglu [50%] | 88h | 88h |
| 27 | 1.4.1.3 | Torerkennung | 5d | 2021-06-23 A | 2021-06-27 A |  | 100% |  |  | start no earlier than 2021-06-23 | Lukas Evers [30%] | 12h | 12h |
| 28 | 1.4.1.4 | Autonome Navigation & Umbgebungserkundung | 11d | 2021-06-10 A | 2021-06-20 A |  | 100% |  |  | start no earlier than 2021-05-27 | Lukas Evers [30%] | 44h | 44h |
| 29 | 1.4.1.5 | Linie abfahren | 10d | 2021-06-21 A | 2021-06-30 A | 25 | 100% |  |  | start no earlier than 2021-06-21 | Umut Uzunoglu | 80h | 80h |

| ID | WBS | Task | Duration | Start | Finish | Predecessors | Complete | Remaining | Total slack | Constraint | Deadline | Resources | Work | Actual work |
| --- | --- | --- | --- | --- | --- | --- | --- | --- | --- | --- | --- | --- | --- | --- |
| 30 | 1.4.2 | **3D-Modell** | 9.25d | 2021-06-10 A | 2021-06-19 A |  | 100% |  |  |  |  |  | 138h | 138h |
| 31 | 1.4.2.1 | Chassis Montage | 3d | 2021-06-10 A | 2021-06-12 A |  | 100% |  |  |  |  | Hien Anh Nguyen Manh; Son Khue Nguyen | 48h | 48h |
| 32 | 1.4.2.2 | Chassis Verbesserungen | 6.25d | 2021-06-13 A | 2021-06-19 A | 31 | 100% |  |  |  |  | Hien Anh Nguyen Manh; Son Khue Nguyen [30%] | 90h | 90h |
| 33 | 1.5 | **Sprint 3** | 21d | 2021-07-01 A | 2021-07-21 |  | 92% | 1.6d | 0d |  |  |  | 164h | 164h |
| 34 | 1.5.1 | **3D-Modell** | 15d | 2021-07-01 A | 2021-07-15 A |  | 100% |  |  |  |  |  | 80h | 80h |
| 35 | 1.5.1.1 | Chassis Finalisierung | 15d | 2021-07-01 A | 2021-07-15 A |  | 100% |  |  | start no earlier than 2021-07-01 |  | Hien Anh Nguyen Manh [50%]; Son Khue Nguyen [41.7%] | 80h | 80h |
| 36 | 1.5.2 | **Intelligenz** | 21d | 2021-07-01 A | 2021-07-21 |  | 91% | 1.91d | 0d |  |  |  | 84h | 84h |
| 37 | 1.5.2.1 | Ballsuchalgorithmus | 21d | 2021-07-01 A | 2021-07-21 A |  | 100% |  |  | start no earlier than 2021-07-01 |  |  |  |  |
| 38 | 1.5.2.2 | Ballführung | 14d | 2021-07-01 A | 2021-07-14 A |  | 100% |  |  | start no earlier than 2021-07-01 |  |  |  |  |
| 39 | 1.5.2.3 | Hindernis umfahren | 14d | 2021-07-01 A | 2021-07-14 A |  | 100% |  |  | start no earlier than 2021-07-01 |  |  |  |  |
| 40 | 1.5.2.4 | Autonome Navigation & Umbgebungserkundung | 21d | 2021-07-01 A | 2021-07-21 A |  | 100% |  |  | finish no earlier than 2021-07-21 |  | Lukas Evers [50%] | 84h | 84h |
| 41 | 1.5.2.5 | niedrig-priorisierte Funktionen | 7d | 2021-07-15 | 2021-07-21 | 39 |  |  | 0d |  | 2021-07-21 |  |  |  |
| 42 | 1.6 | **Qualitätssicherung** | 63d | 2021-05-20 A | 2021-07-21 A |  | 100% |  |  |  |  |  | 100h | 100h |
| 43 | 1.6.1 | Testfälle Sprint 1 | 3.75d | 2021-05-20 A | 2021-05-23 A | 8FF | 100% |  |  |  |  | Son Khue Nguyen | 30h | 30h |
| 44 | 1.6.2 | Testfälle Sprint 2 | 3.75d | 2021-06-10 A | 2021-06-13 A | 23FF | 100% |  |  |  |  | Son Khue Nguyen | 30h | 30h |
| 45 | 1.6.3 | Testfälle Sprint 3 | 5d | 2021-07-16 A | 2021-07-21 A | 33FF | 100% |  |  | finish no earlier than 2021-07-21 |  | Son Khue Nguyen | 40h | 40h |
| 46 | 2 | **Projektmanagement** | 84d | 2021-04-29 A | 2021-07-21 A |  | 100% |  |  |  |  |  | 122h | 122h |
| 47 | 2.1 | Projektplan erstellen | 21d | 2021-04-29 A | 2021-05-19 A | 2 | 100% |  |  | finish no later than 2021-05-19 |  | Hien Anh Nguyen Manh | 32h | 32h |
| 48 | 2.2 | Projektplan & Sprintplanning Sprint 1 | 21d | 2021-05-20 A | 2021-06-09 A | 47 | 100% |  |  | finish no later than 2021-06-09 |  | Hien Anh Nguyen Manh | 30h | 30h |
| 49 | 2.3 | Projektplan & Sprintplanning Sprint 2 | 21d | 2021-06-10 A | 2021-06-30 A | 48 | 100% |  |  | finish no later than 2021-06-30 |  | Hien Anh Nguyen Manh | 30h | 30h |
| 50 | 2.4 | Projektplan & Sprintplanning Sprint 3 | 21d | 2021-07-01 A | 2021-07-21 A | 49 | 100% |  |  | finish no later than 2021-07-21 |  | Hien Anh Nguyen Manh | 30h | 30h |
